# 东科 Vth -1V

Schedule from a web Gantt chart, 2025-09-29 to 2026-12-29.
Every day is a working day

## Schedule

| ID | WBS | Task | Duration | Start | Finish | Predecessors | Complete | Status | inPeople |
| --- | --- | --- | --- | --- | --- | --- | --- | --- | --- |
| 2 | 1 | kick-off | 1d | 2025-09-29 | 2025-09-29 |  | 100% | done |  |
| 3 | 2 | 项目立项会议 | 1d | 2025-10-15 | 2025-10-15 |  |  |  |  |
| 4 | 3 | **1st Learning Cycle** | 107d | 2025-10-15 | 2026-01-29 |  |  |  |  |
| 5 | 3.1 | W/S | 30d | 2025-10-15 | 2025-11-13 |  |  |  |  |
| 6 | 3.2 | F/O | 2d | 2025-11-14 | 2025-11-15 | 5 |  | waiting |  |
| 7 | 3.3 | Samples | 35d | 2025-11-16 | 2025-12-20 | 6 |  | waiting | 张明东/谢书生 |
| 8 | 3.4 | RE 1000H | 40d | 2025-12-21 | 2026-01-29 | 7 |  | waiting | 刘子良/邓超凡 |
| 9 | 4 | **2nd Learning Cycle** | 120d | 2026-01-30 | 2026-05-29 |  |  |  |  |
| 10 | 4.1 | Wafer & Assembly | 80d | 2026-01-30 | 2026-04-19 |  |  |  |  |
| 11 | 4.2 | RE 1000H | 40d | 2026-04-20 | 2026-05-29 | 10 |  | waiting | 刘子良/邓超凡 |
| 12 | 5 | **3rd Learning Cycle** | 90d | 2026-05-31 | 2026-08-28 |  |  |  |  |
| 13 | 5.1 | Wafer & Assembly | 50d | 2026-05-31 | 2026-07-19 |  |  |  |  |
| 14 | 5.2 | RE 1000H | 40d | 2026-07-20 | 2026-08-28 | 13 |  | waiting | 刘子良/邓超凡 |
| 15 | 6 | **Formal Qual.** | 121d | 2026-08-31 | 2026-12-29 |  |  |  |  |
| 16 | 6.1 | SPW W/S | 41d | 2026-08-31 | 2026-10-10 |  |  |  |  |
| 17 | 6.2 | F/O & Assemby out | 30d | 2026-10-11 | 2026-11-09 | 16 |  | waiting |  |
| 18 | 6.3 | RE 168H | 15d | 2026-11-10 | 2026-11-24 | 17 |  | waiting | 刘子良/邓超凡 |
| 19 | 6.4 | RE 1000H | 50d | 2026-11-10 | 2026-12-29 | 17 |  | waiting | 刘子良/邓超凡 |
